Schedule from MS Project, 2016-11-04 to 2017-05-16.
Microsoft

## Calendars

- 标准: Mon-Fri 08:00-12:00, 13:00-17:00; Sat-Sun off. Exceptions (off unless hours are given): 2017-01-25 to 2017-02-05 (春节).

## Resources

| Resource |
| --- |
| 长石河谷？ |
| 微信组 |
| 微信组？ |
| 微信硬件云平台 |
| 模塑 |
| 欣锐 |
| 爱联 |
| 微信 |
| 模塑？ |
| 长石河谷 |

## Schedule

| ID | WBS | Task | Duration | Start | Finish | Predecessors | Total slack | Free slack | Constraint | Resources | Work |
| --- | --- | --- | --- | --- | --- | --- | --- | --- | --- | --- | --- |
| 1 | 1 | 产品规格定义书 | 21d | 2016-12-01 | 2016-12-30 |  | 6d | 0d | start no earlier than 2016-12-01 | 长石河谷; 模塑 | 336h |
| 2 | 2 | **微信硬件平台对接** | 89d? | 2016-12-30 | 2017-05-16 |  | 0d |  |  |  | 64h |
| 3 | 2.1 | 微信公众号开通 | 1d? | 2016-12-30 | 2017-01-02 | 1 | 90.88d | 0d |  | 长石河谷？ | 8h |
| 4 | 2.2 | 添加产品 | 1d? | 2017-01-02 | 2017-01-03 | 3 | 90.88d | 0d |  | 长石河谷？ | 8h |
| 5 | 2.3 | 产品开发调试 | 1d? | 2017-01-03 | 2017-01-04 | 4 | 90.88d | 0d |  | 微信组？ | 8h |
| 6 | 2.4 | 获取设备ID | 1d? | 2017-01-04 | 2017-01-05 | 5 | 90.88d | 0d |  | 微信组？ | 8h |
| 7 | 2.5 | 获取设备二维码 | 1d? | 2017-01-05 | 2017-01-06 | 6 | 90.88d |  |  | 微信组？ | 8h |
| 8 | 2.6 | 产品申请认证 | 1d? | 2017-05-10 | 2017-05-11 | 51 | 0d |  |  |  |  |
| 9 | 2.7 | 体验测试通过 | 1d? | 2017-05-11 | 2017-05-12 | 8 | 0d |  |  | 微信硬件云平台 | 8h |
| 10 | 2.8 | 授权配额管理 | 1d? | 2017-05-12 | 2017-05-15 | 9 | 0d |  |  | 长石河谷？ | 8h |
| 11 | 2.9 | 发布公众号和硬件 | 1d? | 2017-05-15 | 2017-05-16 | 10 | 0d |  |  | 长石河谷？ | 8h |
| 12 | 3 | **结构和模具** | 93d | 2016-11-04 | 2017-03-24 |  | 2.12d |  |  |  | 744h |
| 13 | 3.1 | 结构设计 | 56d | 2016-11-04 | 2017-01-20 | 1 | 2.12d | 0d | finish no earlier than 2017-01-20 | 模塑 | 448h |
| 14 | 3.2 | 功能手板设计 | 10d | 2017-01-23 | 2017-02-15 | 13 | 2.12d | 0d | finish no earlier than 2017-01-20 | 模塑 | 80h |
| 15 | 3.3 | 开模 | 27d | 2017-02-16 | 2017-03-24 | 14 | 2.12d | 0d |  | 模塑 | 216h |
| 16 | 4 | **控制板系统研发** | 89d? | 2016-12-30 | 2017-05-16 |  | 0d |  |  |  | 1600h |
| 17 | 4.1 | 需求设计（包括接口设计） | 15d | 2016-12-30 | 2017-01-20 | 1 | 6d | 0d |  | 欣锐 | 120h |
| 18 | 4.2 | **硬件研发** | 40d | 2017-02-06 | 2017-04-03 |  | 31d |  |  |  | 256h |
| 19 | 4.2.1 | 方案设计 | 6d | 2017-02-06 | 2017-02-14 | 17 | 39d | 0d | start no earlier than 2017-02-06 | 欣锐 | 48h |
| 20 | 4.2.2 | 原理图设计 | 5d | 2017-02-14 | 2017-02-21 | 19 | 39d | 0d |  | 欣锐 | 40h |
| 21 | 4.2.3 | PCB制作和贴片 | 5d | 2017-02-21 | 2017-02-28 | 20 | 39d | 0d |  | 欣锐 | 40h |
| 22 | 4.2.4 | 一批次板子输出 | 3d | 2017-02-28 | 2017-03-03 | 21 | 39d | 8d |  | 欣锐 | 24h |
| 23 | 4.2.5 | 二批次板子输出 | 13d | 2017-03-15 | 2017-04-03 | 22 | 31d |  | start no earlier than 2017-03-15 | 欣锐 | 104h |
| 24 | 4.3 | **软件研发** | 65d? | 2017-01-20 | 2017-05-03 |  | 6d |  |  |  | 272h |
| 25 | 4.3.1 | 编码 | 22d | 2017-01-20 | 2017-03-03 | 17 | 6d | 0d |  | 欣锐 | 176h |
| 26 | 4.3.2 | 内部测试 | 9d | 2017-03-03 | 2017-03-16 | 25 | 6d | 0d |  | 欣锐 | 72h |
| 27 | 4.3.3 | alpha版本 | 1d | 2017-04-03 | 2017-04-03 | 47 | 2.12d | 0d |  | 欣锐 | 8h |
| 28 | 4.3.4 | beta版本 | 1d? | 2017-04-18 | 2017-04-18 | 56 | 19.12d |  |  | 欣锐 | 8h |
| 29 | 4.3.5 | release版本 | 1d? | 2017-05-02 | 2017-05-03 | 58 | 9d |  |  | 欣锐 | 8h |

| ID | WBS | Task | Type | Duration | Start | Finish | Predecessors | Total slack | Free slack | Constraint | Resources | Work |
| --- | --- | --- | --- | --- | --- | --- | --- | --- | --- | --- | --- | --- |
| 30 | 4.4 | **wifi 模块软件** |  | 80d | 2016-12-30 | 2017-05-03 |  | 9d |  |  |  | 224h |
| 31 | 4.4.1 | 需求设计（包括接口设计） |  | 5d | 2016-12-30 | 2017-01-06 | 1 | 27d | 0d |  | 爱联 | 40h |
| 32 | 4.4.2 | 编码 |  | 15d | 2017-01-06 | 2017-02-08 | 31 | 27d | 0d |  | 爱联 | 120h |
| 33 | 4.4.3 | 内部测试 |  | 5d | 2017-02-08 | 2017-02-15 | 32 | 27d | 0d |  | 爱联 | 40h |
| 34 | 4.4.4 | alpha版本 |  | 1d | 2017-04-03 | 2017-04-03 | 47 | 2.12d | 0d |  | 爱联 | 8h |
| 35 | 4.4.5 | beta版本 |  | 1d | 2017-04-18 | 2017-04-18 | 56 | 19.12d |  |  | 爱联 | 8h |
| 36 | 4.4.6 | release版本 |  | 1d | 2017-05-02 | 2017-05-03 | 58 | 9d |  |  | 爱联 | 8h |
| 37 | 4.5 | **微信软件** |  | 80d? | 2016-12-30 | 2017-05-03 |  | 9d |  |  |  | 48h |
| 38 | 4.5.1 | 需求设计（包括接口设计） |  | 1d? | 2016-12-30 | 2017-01-02 | 1 | 40d | 0d |  | 微信组 | 8h |
| 39 | 4.5.2 | 编码 |  | 1d? | 2017-01-02 | 2017-01-03 | 38 | 49d | 0d |  | 微信组 | 8h |
| 40 | 4.5.3 | 内部测试 |  | 1d? | 2017-01-03 | 2017-01-04 | 39 | 49d | 22d |  | 微信组 | 8h |
| 41 | 4.5.4 | alpha版本 |  | 1d | 2017-04-03 | 2017-04-03 | 47 | 2.12d | 0d |  | 微信组 | 8h |
| 42 | 4.5.5 | beta版本 |  | 1d | 2017-04-18 | 2017-04-18 | 56 | 19.12d |  |  | 微信组 | 8h |
| 43 | 4.5.6 | release版本 |  | 1d | 2017-05-02 | 2017-05-03 | 58 | 9d |  |  | 微信组 | 8h |
| 44 | 4.6 | **对接联调** |  | 32.88d | 2017-02-15 | 2017-03-31 |  | 2.12d |  |  |  | 216h |
| 45 | 4.6.1 | 主控板和wifi对接 |  | 3d | 2017-03-16 | 2017-03-21 | 26, 33 | 6d | 3.88d |  | 欣锐; 爱联 | 48h |
| 46 | 4.6.2 | wifi和微信对接 |  | 3d | 2017-02-15 | 2017-02-20 | 33, 40 | 27d | 24.88d |  | 爱联; 微信组 | 48h |
| 47 | 4.6.3 | 整机联调 |  | 5d | 2017-03-27 | 2017-03-31 | 15, 45, 46 | 2.12d | 0d |  | 欣锐; 爱联; 微信 | 120h |
| 48 | 4.7 | **整机组装** |  | 36.12d? | 2017-03-27 | 2017-05-16 |  | 0d |  |  |  | 112h |
| 49 | 4.7.1 | 初样 |  | 5d | 2017-03-27 | 2017-03-31 | 15 | 3.12d | 1d |  | 模塑 | 40h |
| 50 | 4.7.2 | 正样 |  | 4d | 2017-04-14 | 2017-04-20 | 49 | 0d |  | start no earlier than 2017-04-14 | 模塑 | 32h |
| 51 | 4.7.3 | 小批量 |  | 4d | 2017-05-04 | 2017-05-10 | 59 | 0d |  |  | 模塑 | 32h |
| 52 | 4.7.4 | 量产 | manual | 1d | 2017-05-15 | 2017-05-16 | 51 |  |  |  | 模塑 | 8h |
| 53 | 4.8 | **系统测试** |  | 66d | 2017-01-20 | 2017-05-04 |  | 0d |  |  |  | 352h |
| 54 | 4.8.1 | 编写测试用例 |  | 20d | 2017-01-20 | 2017-03-01 | 1, 17, 31, 38 | 26d | 23.88d |  |  |  |
| 55 | 4.8.2 | 第一轮测试（晗回归测试） |  | 3d | 2017-04-04 | 2017-04-06 | 27, 34, 41, 54, 49 | 2.12d | 0d |  | 模塑 | 24h |
| 56 | 4.8.3 | 第一轮测试整改 |  | 7d | 2017-04-07 | 2017-04-17 | 55 | 2.12d | 0d |  | 欣锐; 爱联; 微信 | 168h |
| 57 | 4.8.4 | 第二轮测试（晗回归测试） |  | 3d | 2017-04-20 | 2017-04-25 | 50, 56 | 0d |  |  | 模塑 | 24h |
| 58 | 4.8.5 | 第二轮测试整改 |  | 5d | 2017-04-25 | 2017-05-02 | 57 | 0d |  |  | 欣锐; 爱联; 微信 | 120h |
| 59 | 4.8.6 | 输出测试报告 |  | 2d | 2017-05-02 | 2017-05-04 | 58 | 0d |  |  | 模塑 | 16h |
